# IST645S18A2BSharmaA

Schedule from MS Project, 2018-02-01 to 2018-08-23, 5 hours a day, costs in $.

## Calendars

- Standard: Mon-Fri 08:00-12:00, 13:00-17:00; Sat-Sun off. Exceptions (off unless hours are given): 2018-05-28 (Memorial Day, recurring).

## Resources

| Resource | Rate |
| --- | --- |
| Doug Coster |  |
| Greg Harrison |  |
| Norma Wilson |  |
| Mat Jackson |  |
| Apurva Sharma | 38 |
| Ray Bellman | 27.5 |
| Chris Dobbrow |  |
| Kurt DeMaagd |  |
| Ryan Smith |  |
| Curtis Kellman |  |
| Lamont Wilson | 40 |
| June Peterson | 48 |
| Krishnanand Naik | 37 |
| Yi Wang | 32 |
| Mary Gibson | 48 |
| Christina Kutty | 46 |
| Paul Johnson | 39 |
| Initial Payment :Contract Fees | 10000 |
| CNC Machines Installation of Sensors Part A (1/3rd) | 11000 |
| Sight Machines Software Contract Payment | 3500 |
| CNC Machines Installation of Sensors Part C (Final) | 12000 |
| CNC Machines Installation of Sensors Part B (2/3rd) | 11000 |
| Sight Machines Cloud Services Contract Payment | 1725 |
| Sight Machines System Training Payment | 17300 |
| Successful User Acceptance Sign off Payment | 7500 |

## Schedule

| ID | WBS | Task | Type | Duration | Start | Finish | Predecessors | Total slack | Free slack | Resources | Work | Cost |
| --- | --- | --- | --- | --- | --- | --- | --- | --- | --- | --- | --- | --- |
| 1 | 1 | **Initiation** |  | 9.87d | 2018-02-01 10:00 | 2018-02-09 11:21 |  | 32.04d |  |  | 336.5h | 5,026.74 |
| 2 | 1.1 | Project kick off meeting with the key stakeholders from Nolte and Sight Machine Analytics |  | 0.16d | 2018-02-01 10:00 | 2018-02-01 10:48 |  | 228.97d | 0d | Apurva Sharma; Chris Dobbrow; Greg Harrison; Mat Jackson; Norma Wilson; Ray Bellman; Doug Coster | 2h | 13.1 |
| 3 | 1.2 | Gain Approval from President and the VP of Finance from Nolte by Norma and Mat to laydown initial concept |  | 1.2d | 2018-02-01 10:00 | 2018-02-01 17:00 |  | 193.03d | 0d | Doug Coster; Greg Harrison; Mat Jackson; Norma Wilson | 24h |  |
| 4 | 1.3 | Layout of the initial concept of the first -phase trial of smart factory technology with Nolte and SM |  | 2d | 2018-02-02 08:00 | 2018-02-05 10:00 | 3, 2 | 227.93d |  | Apurva Sharma; Mat Jackson; Norma Wilson; Ray Bellman; Chris Dobbrow | 42h | 524 |
| 5 | 1.4 | 'Research & Development Meeting' -Gather Requirements(Agenda-Discussion on project scope, budget, cost estimation parameters and scheduling ) |  | 4.5d | 2018-02-02 08:00 | 2018-02-06 15:30 | 3 | 193.03d | 0d | Apurva Sharma; Chris Dobbrow; Doug Coster; Greg Harrison; Mat Jackson; Norma Wilson; Ray Bellman; Christina Kutty | 180h | 2,508.75 |
| 6 | 1.5 | Start work on preparing Project Charter/Scope Document |  | 5d | 2018-02-01 10:00 | 2018-02-06 11:00 |  | 32.04d | 0d | Apurva Sharma | 25h | 950 |
| 7 | 1.6 | Ensure that all requirements are addressed in requirements traceability matrix (RTM) |  | 1d | 2018-02-06 11:00 | 2018-02-06 17:00 | 6 | 32.04d | 0d | Apurva Sharma | 5h | 190 |
| 8 | 1.7 | Deliverable: Create Project Charter having project and process deliverables, requirements and agenda |  | 1d | 2018-02-07 08:00 | 2018-02-07 14:00 | 7 | 32.04d | 0d | Apurva Sharma | 5h | 190 |
| 9 | 1.8 | Send the final charter to all key stakeholders to Gain sign offs from them |  | 1d | 2018-02-07 14:00 | 2018-02-08 10:00 | 8 | 32.04d | 0d | Apurva Sharma; Greg Harrison; Doug Coster; Mat Jackson; Norma Wilson; Ray Bellman | 22h | 175.5 |
| 10 | 1.9 | Charter review meeting to identify which areas of project scope require clarification; Project Q&A |  | 0.07d | 2018-02-08 10:00 | 2018-02-08 10:21 | 9 | 32.04d | 0d | Apurva Sharma; Chris Dobbrow; Doug Coster; Greg Harrison; Mat Jackson; Norma Wilson; Ray Bellman | 2.5h | 23.39 |
| 11 | 1.10 | Project Charter provisions for re-work |  | 1d | 2018-02-08 10:21 | 2018-02-08 16:21 | 10 | 32.04d | 0d | Apurva Sharma | 5h | 190 |
| 12 | 1.11 | Charter approved | milestone | 0.8d | 2018-02-08 16:21 | 2018-02-09 11:21 | 11 | 32.04d | 0d | Greg Harrison; Doug Coster; Apurva Sharma; Mat Jackson; Norma Wilson; Ray Bellman | 24h | 262 |
| 13 | 2 | **Planning** |  | 225.63d | 2018-02-01 10:00 | 2018-08-20 10:10 |  | 5.5d |  |  | 1404.46h | 50,799.33 |
| 14 | 2.1 | **Develop a Project Plan** |  | 225.63d | 2018-02-01 10:00 | 2018-08-20 10:10 |  | 5.5d |  |  | 1248.13h | 47,618.94 |
| 15 | 2.1.1 | **Schedule Management Plan** |  | 68.17d | 2018-02-01 10:00 | 2018-04-02 15:51 |  | 41.91d |  |  | 483.5h | 17,181.75 |
| 16 | 2.1.1.1 | Ensure that the project team key stakeholders have signed the project charter |  | 0.3d | 2018-02-09 11:21 | 2018-02-09 13:51 | 12 | 32.04d | 0d | Apurva Sharma | 1.5h | 57 |
| 17 | 2.1.1.2 | Update Stake holder register |  | 0.6d | 2018-02-01 10:00 | 2018-02-01 14:00 |  | 230.53d |  | Apurva Sharma | 3h | 114 |
| 18 | 2.1.1.3 | Calulate requirements to schedule trainings for CNC machine operators |  | 3d | 2018-02-09 13:51 | 2018-02-13 11:51 | 16 | 32.04d | 0d | Apurva Sharma | 15h | 570 |
| 19 | 2.1.1.4 | Training content development with help of SM for CNC machine operators |  | 55d | 2018-02-13 11:51 | 2018-04-02 15:51 | 18 | 32.04d | 0d | Mary Gibson | 275h | 13,200 |
| 20 | 2.1.1.5 | Establish Scope Change control methodology and communicate the procedures involved |  | 1d | 2018-02-09 13:51 | 2018-02-12 09:51 | 16 | 219.96d |  | Apurva Sharma; Chris Dobbrow; Doug Coster; Greg Harrison; Mat Jackson; Norma Wilson; Ray Bellman | 35h | 327.5 |
| 21 | 2.1.1.6 | Identify the approaches to manage project execution(the project life cycle to be used (E.g SDLC,Agile)) |  | 1.8d | 2018-02-01 10:00 | 2018-02-02 11:00 |  | 229.33d |  | Apurva Sharma | 9h | 342 |
| 22 | 2.1.1.7 | Establish major decision/check points in the project duration and refine project parameters |  | 1.5d | 2018-02-09 13:51 | 2018-02-12 13:21 | 16 | 219.46d |  | Apurva Sharma; Chris Dobbrow; Mat Jackson; Norma Wilson; Ray Bellman | 37.5h | 491.25 |
| 23 | 2.1.1.8 | Establish Quality Assurance metrics and Test planning policies |  | 1d | 2018-02-01 10:00 | 2018-02-01 16:00 |  | 230.13d |  | Apurva Sharma | 5h | 190 |
| 24 | 2.1.1.9 | Deliverable: Prepare Work Breakdown Structure document |  | 5d | 2018-02-01 10:00 | 2018-02-06 11:00 |  | 216.73d | 0d | Apurva Sharma | 25h | 950 |
| 25 | 2.1.1.10 | Share WBS with stakeholders |  | 1d | 2018-02-06 11:00 | 2018-02-06 17:00 | 24 | 222.63d | 0d | Apurva Sharma | 5h | 190 |
| 26 | 2.1.1.11 | WBS review meeting to identify any areas that need clarification;Q&A |  | 2d | 2018-02-07 08:00 | 2018-02-08 10:00 | 25 | 222.63d | 0d | Apurva Sharma; Chris Dobbrow; Doug Coster; Greg Harrison; Mat Jackson; Norma Wilson; Ray Bellman | 70h | 655 |
| 27 | 2.1.1.12 | Review WBS incase of any issues and share updates if any |  | 0.5d | 2018-02-08 10:00 | 2018-02-08 13:30 | 26 | 222.63d |  | Apurva Sharma | 2.5h | 95 |

| ID | WBS | Task | Duration | Start | Finish | Total slack | Constraint | Resources | Work | Cost |
| --- | --- | --- | --- | --- | --- | --- | --- | --- | --- | --- |
| 28 | 2.1.2 | **Communication Plan** | 225.63d | 2018-02-01 10:00 | 2018-08-20 10:10 | 5.5d |  |  | 254.63h | 7,232.19 |
| 29 | 2.1.2.1 | **Weekly Status meetings to monitor Project progress and address issues** | 222.43d | 2018-02-05 10:00 | 2018-08-20 10:10 | 5.5d |  |  | 29h | 1,019.83 |
| 30 | 2.1.2.1.1 | Weekly Status meetings to monitor Project progress and address issues 1 | 0.03d | 2018-02-05 10:00 | 2018-02-05 10:10 | 227.9d | start no earlier than 2018-02-05 10:00 | Apurva Sharma; Chris Dobbrow; June Peterson; Krishnanand Naik; Lamont Wilson; Mary Gibson | 1h | 35.17 |
| 31 | 2.1.2.1.2 | Weekly Status meetings to monitor Project progress and address issues 2 | 0.03d | 2018-02-12 10:00 | 2018-02-12 10:10 | 219.9d | start no earlier than 2018-02-12 10:00 | Apurva Sharma; Chris Dobbrow; June Peterson; Krishnanand Naik; Lamont Wilson; Mary Gibson | 1h | 35.17 |
| 32 | 2.1.2.1.3 | Weekly Status meetings to monitor Project progress and address issues 3 | 0.03d | 2018-02-19 10:00 | 2018-02-19 10:10 | 211.9d | start no earlier than 2018-02-19 10:00 | Apurva Sharma; Chris Dobbrow; June Peterson; Krishnanand Naik; Lamont Wilson; Mary Gibson | 1h | 35.17 |
| 33 | 2.1.2.1.4 | Weekly Status meetings to monitor Project progress and address issues 4 | 0.03d | 2018-02-26 10:00 | 2018-02-26 10:10 | 203.9d | start no earlier than 2018-02-26 10:00 | Apurva Sharma; Chris Dobbrow; June Peterson; Krishnanand Naik; Lamont Wilson; Mary Gibson | 1h | 35.17 |
| 34 | 2.1.2.1.5 | Weekly Status meetings to monitor Project progress and address issues 5 | 0.03d | 2018-03-05 10:00 | 2018-03-05 10:10 | 195.9d | start no earlier than 2018-03-05 10:00 | Apurva Sharma; Chris Dobbrow; June Peterson; Krishnanand Naik; Lamont Wilson; Mary Gibson | 1h | 35.17 |
| 35 | 2.1.2.1.6 | Weekly Status meetings to monitor Project progress and address issues 6 | 0.03d | 2018-03-12 10:00 | 2018-03-12 10:10 | 187.9d | start no earlier than 2018-03-12 10:00 | Apurva Sharma; Chris Dobbrow; June Peterson; Krishnanand Naik; Lamont Wilson; Mary Gibson | 1h | 35.17 |
| 36 | 2.1.2.1.7 | Weekly Status meetings to monitor Project progress and address issues 7 | 0.03d | 2018-03-19 10:00 | 2018-03-19 10:10 | 179.9d | start no earlier than 2018-03-19 10:00 | Apurva Sharma; Chris Dobbrow; June Peterson; Krishnanand Naik; Lamont Wilson; Mary Gibson | 1h | 35.17 |
| 37 | 2.1.2.1.8 | Weekly Status meetings to monitor Project progress and address issues 8 | 0.03d | 2018-03-26 10:00 | 2018-03-26 10:10 | 171.9d | start no earlier than 2018-03-26 10:00 | Apurva Sharma; Chris Dobbrow; June Peterson; Krishnanand Naik; Lamont Wilson; Mary Gibson | 1h | 35.17 |
| 38 | 2.1.2.1.9 | Weekly Status meetings to monitor Project progress and address issues 9 | 0.03d | 2018-04-02 10:00 | 2018-04-02 10:10 | 163.9d | start no earlier than 2018-04-02 10:00 | Apurva Sharma; Chris Dobbrow; June Peterson; Krishnanand Naik; Lamont Wilson; Mary Gibson | 1h | 35.17 |
| 39 | 2.1.2.1.10 | Weekly Status meetings to monitor Project progress and address issues 10 | 0.03d | 2018-04-09 10:00 | 2018-04-09 10:10 | 155.9d | start no earlier than 2018-04-09 10:00 | Apurva Sharma; Chris Dobbrow; June Peterson; Krishnanand Naik; Lamont Wilson; Mary Gibson | 1h | 35.17 |
| 40 | 2.1.2.1.11 | Weekly Status meetings to monitor Project progress and address issues 11 | 0.03d | 2018-04-16 10:00 | 2018-04-16 10:10 | 147.9d | start no earlier than 2018-04-16 10:00 | Apurva Sharma; Chris Dobbrow; June Peterson; Krishnanand Naik; Lamont Wilson; Mary Gibson | 1h | 35.17 |
| 41 | 2.1.2.1.12 | Weekly Status meetings to monitor Project progress and address issues 12 | 0.03d | 2018-04-23 10:00 | 2018-04-23 10:10 | 139.9d | start no earlier than 2018-04-23 10:00 | Apurva Sharma; Chris Dobbrow; June Peterson; Krishnanand Naik; Lamont Wilson; Mary Gibson | 1h | 35.17 |
| 42 | 2.1.2.1.13 | Weekly Status meetings to monitor Project progress and address issues 13 | 0.03d | 2018-04-30 10:00 | 2018-04-30 10:10 | 131.9d | start no earlier than 2018-04-30 10:00 | Apurva Sharma; Chris Dobbrow; June Peterson; Krishnanand Naik; Lamont Wilson; Mary Gibson | 1h | 35.17 |
| 43 | 2.1.2.1.14 | Weekly Status meetings to monitor Project progress and address issues 14 | 0.03d | 2018-05-07 10:00 | 2018-05-07 10:10 | 123.9d | start no earlier than 2018-05-07 10:00 | Apurva Sharma; Chris Dobbrow; June Peterson; Krishnanand Naik; Lamont Wilson; Mary Gibson | 1h | 35.17 |
| 44 | 2.1.2.1.15 | Weekly Status meetings to monitor Project progress and address issues 15 | 0.03d | 2018-05-14 10:00 | 2018-05-14 10:10 | 115.9d | start no earlier than 2018-05-14 10:00 | Apurva Sharma; Chris Dobbrow; June Peterson; Krishnanand Naik; Lamont Wilson; Mary Gibson | 1h | 35.17 |
| 45 | 2.1.2.1.16 | Weekly Status meetings to monitor Project progress and address issues 16 | 0.03d | 2018-05-21 10:00 | 2018-05-21 10:10 | 107.9d | start no earlier than 2018-05-21 10:00 | Apurva Sharma; Chris Dobbrow; June Peterson; Krishnanand Naik; Lamont Wilson; Mary Gibson | 1h | 35.17 |
| 46 | 2.1.2.1.17 | Weekly Status meetings to monitor Project progress and address issues 17 | 0.03d | 2018-05-29 08:00 | 2018-05-29 08:10 | 100.3d | start no earlier than 2018-05-28 10:00 | Apurva Sharma; Chris Dobbrow; June Peterson; Krishnanand Naik; Lamont Wilson; Mary Gibson | 1h | 35.17 |
| 47 | 2.1.2.1.18 | Weekly Status meetings to monitor Project progress and address issues 18 | 0.03d | 2018-06-04 10:00 | 2018-06-04 10:10 | 93.5d | start no earlier than 2018-06-04 10:00 | Apurva Sharma; Chris Dobbrow; June Peterson; Krishnanand Naik; Lamont Wilson; Mary Gibson | 1h | 35.17 |
| 48 | 2.1.2.1.19 | Weekly Status meetings to monitor Project progress and address issues 19 | 0.03d | 2018-06-11 10:00 | 2018-06-11 10:10 | 85.5d | start no earlier than 2018-06-11 10:00 | Apurva Sharma; Chris Dobbrow; June Peterson; Krishnanand Naik; Lamont Wilson; Mary Gibson | 1h | 35.17 |
| 49 | 2.1.2.1.20 | Weekly Status meetings to monitor Project progress and address issues 20 | 0.03d | 2018-06-18 10:00 | 2018-06-18 10:10 | 77.5d | start no earlier than 2018-06-18 10:00 | Apurva Sharma; Chris Dobbrow; June Peterson; Krishnanand Naik; Lamont Wilson; Mary Gibson | 1h | 35.17 |
| 50 | 2.1.2.1.21 | Weekly Status meetings to monitor Project progress and address issues 21 | 0.03d | 2018-06-25 10:00 | 2018-06-25 10:10 | 69.5d | start no earlier than 2018-06-25 10:00 | Apurva Sharma; Chris Dobbrow; June Peterson; Krishnanand Naik; Lamont Wilson; Mary Gibson | 1h | 35.17 |
| 51 | 2.1.2.1.22 | Weekly Status meetings to monitor Project progress and address issues 22 | 0.03d | 2018-07-02 10:00 | 2018-07-02 10:10 | 61.5d | start no earlier than 2018-07-02 10:00 | Apurva Sharma; Chris Dobbrow; June Peterson; Krishnanand Naik; Lamont Wilson; Mary Gibson | 1h | 35.17 |
| 52 | 2.1.2.1.23 | Weekly Status meetings to monitor Project progress and address issues 23 | 0.03d | 2018-07-09 10:00 | 2018-07-09 10:10 | 53.5d | start no earlier than 2018-07-09 10:00 | Apurva Sharma; Chris Dobbrow; June Peterson; Krishnanand Naik; Lamont Wilson; Mary Gibson | 1h | 35.17 |
| 53 | 2.1.2.1.24 | Weekly Status meetings to monitor Project progress and address issues 24 | 0.03d | 2018-07-16 10:00 | 2018-07-16 10:10 | 45.5d | start no earlier than 2018-07-16 10:00 | Apurva Sharma; Chris Dobbrow; June Peterson; Krishnanand Naik; Lamont Wilson; Mary Gibson | 1h | 35.17 |
| 54 | 2.1.2.1.25 | Weekly Status meetings to monitor Project progress and address issues 25 | 0.03d | 2018-07-23 10:00 | 2018-07-23 10:10 | 37.5d | start no earlier than 2018-07-23 10:00 | Apurva Sharma; Chris Dobbrow; June Peterson; Krishnanand Naik; Lamont Wilson; Mary Gibson | 1h | 35.17 |
| 55 | 2.1.2.1.26 | Weekly Status meetings to monitor Project progress and address issues 26 | 0.03d | 2018-07-30 10:00 | 2018-07-30 10:10 | 29.5d | start no earlier than 2018-07-30 10:00 | Apurva Sharma; Chris Dobbrow; June Peterson; Krishnanand Naik; Lamont Wilson; Mary Gibson | 1h | 35.17 |
| 56 | 2.1.2.1.27 | Weekly Status meetings to monitor Project progress and address issues 27 | 0.03d | 2018-08-06 10:00 | 2018-08-06 10:10 | 21.5d | start no earlier than 2018-08-06 10:00 | Apurva Sharma; Chris Dobbrow; June Peterson; Krishnanand Naik; Lamont Wilson; Mary Gibson | 1h | 35.17 |
| 57 | 2.1.2.1.28 | Weekly Status meetings to monitor Project progress and address issues 28 | 0.03d | 2018-08-13 10:00 | 2018-08-13 10:10 | 13.5d | start no earlier than 2018-08-13 10:00 | Apurva Sharma; June Peterson; Krishnanand Naik; Lamont Wilson; Mary Gibson; Chris Dobbrow | 1h | 35.17 |
| 58 | 2.1.2.1.29 | Weekly Status meetings to monitor Project progress and address issues 29 | 0.03d | 2018-08-20 10:00 | 2018-08-20 10:10 | 5.5d | start no earlier than 2018-08-20 10:00 | Apurva Sharma; Chris Dobbrow; June Peterson; Krishnanand Naik; Lamont Wilson; Mary Gibson | 1h | 35.17 |

| ID | WBS | Task | Type | Duration | Start | Finish | Predecessors | Total slack | Free slack | Constraint | Resources | Work | Cost |
| --- | --- | --- | --- | --- | --- | --- | --- | --- | --- | --- | --- | --- | --- |
| 59 | 2.1.2.2 | **Monthly meeting with key stakeholders from SM and Nolte** |  | 204.83d | 2018-02-01 10:00 | 2018-08-01 10:08 |  | 26.3d |  |  |  | 7h | 65.5 |
| 60 | 2.1.2.2.1 | Monthly meeting with key stakeholders from SM and Nolte 1 |  | 0.03d | 2018-02-01 10:00 | 2018-02-01 10:08 |  | 231.1d |  | start no earlier than 2018-02-01 10:00 | Apurva Sharma; Chris Dobbrow; Doug Coster; Greg Harrison; Mat Jackson; Norma Wilson; Ray Bellman | 1h | 9.36 |
| 61 | 2.1.2.2.2 | Monthly meeting with key stakeholders from SM and Nolte 2 |  | 0.03d | 2018-03-01 10:00 | 2018-03-01 10:08 |  | 199.1d |  | start no earlier than 2018-03-01 10:00 | Apurva Sharma; Chris Dobbrow; Doug Coster; Greg Harrison; Mat Jackson; Norma Wilson; Ray Bellman | 1h | 9.36 |
| 62 | 2.1.2.2.3 | Monthly meeting with key stakeholders from SM and Nolte 3 |  | 0.03d | 2018-04-02 08:00 | 2018-04-02 08:08 |  | 164.3d |  | start no earlier than 2018-04-01 10:00 | Apurva Sharma; Chris Dobbrow; Doug Coster; Greg Harrison; Mat Jackson; Norma Wilson; Ray Bellman | 1h | 9.36 |
| 63 | 2.1.2.2.4 | Monthly meeting with key stakeholders from SM and Nolte 4 |  | 0.03d | 2018-05-01 10:00 | 2018-05-01 10:08 |  | 130.3d |  | start no earlier than 2018-05-01 10:00 | Apurva Sharma; Chris Dobbrow; Doug Coster; Greg Harrison; Mat Jackson; Norma Wilson; Ray Bellman | 1h | 9.36 |
| 64 | 2.1.2.2.5 | Monthly meeting with key stakeholders from SM and Nolte 5 |  | 0.03d | 2018-06-01 10:00 | 2018-06-01 10:08 |  | 95.1d |  | start no earlier than 2018-06-01 10:00 | Apurva Sharma; Chris Dobbrow; Doug Coster; Greg Harrison; Mat Jackson; Norma Wilson; Ray Bellman | 1h | 9.36 |
| 65 | 2.1.2.2.6 | Monthly meeting with key stakeholders from SM and Nolte 6 |  | 0.03d | 2018-07-02 08:00 | 2018-07-02 08:08 |  | 61.9d |  | start no earlier than 2018-07-01 10:00 | Apurva Sharma; Chris Dobbrow; Doug Coster; Greg Harrison; Mat Jackson; Norma Wilson; Ray Bellman | 1h | 9.36 |
| 66 | 2.1.2.2.7 | Monthly meeting with key stakeholders from SM and Nolte 7 |  | 0.03d | 2018-08-01 10:00 | 2018-08-01 10:08 |  | 26.3d |  | start no earlier than 2018-08-01 10:00 | Apurva Sharma; Chris Dobbrow; Doug Coster; Greg Harrison; Mat Jackson; Norma Wilson; Ray Bellman | 1h | 9.36 |
| 67 | 2.1.2.3 | Schedule meetings and Define Agendas for the meeting (lists in order the topics to be discussed) |  | 1d | 2018-02-01 10:00 | 2018-02-01 16:00 |  | 230.13d |  |  | Apurva Sharma | 5h | 190 |
| 68 | 2.1.2.4 | Team building activity to record team's values,agreements and operating guidelines/establishing clear expectations |  | 1d | 2018-02-01 10:48 | 2018-02-01 16:48 | 2 | 229.97d |  |  | Apurva Sharma; Chris Dobbrow; Christina Kutty; Doug Coster; Greg Harrison; June Peterson; Krishnanand Naik; Kurt DeMaagd; Lamont Wilson; Mary Gibson; Mat Jackson; Norma Wilson; Ray Bellman; Ryan Smith; Curtis Kellman | 7.63h | 53.35 |
| 69 | 2.1.2.5 | 'Planning' Meeting to identify available time for all work resources and generate a project calendar |  | 1d | 2018-02-06 15:30 | 2018-02-07 11:30 | 5 | 224.43d |  |  | Apurva Sharma; Chris Dobbrow; Christina Kutty; Doug Coster; Greg Harrison; June Peterson; Krishnanand Naik; Lamont Wilson; Mary Gibson; Mat Jackson; Norma Wilson; Paul Johnson; Ray Bellman; Yi Wang | 70h | 1,777.5 |
| 70 | 2.1.2.6 | Generate Information distribution planning documentation that includes project forms, templates, files ,technology and timing procedures and methodology for frequency of communication and glossary of common terminology |  | 3d | 2018-02-06 11:00 | 2018-02-08 10:00 | 24 | 216.73d | 0d |  | Apurva Sharma | 15h | 570 |
| 71 | 2.1.2.7 | Produce project communications use cases document that includes Requirement gathering, planning,reporting,decision making,problem solving, conflict resolution,and negotiation |  | 2d | 2018-02-08 10:00 | 2018-02-09 12:00 | 70 | 216.73d | 0d |  | Apurva Sharma | 10h | 380 |
| 72 | 2.1.2.8 | Identify and establish the communication methods to be used, Regular meeting, Status reports, Intranet, Instant messaging, Phone call ,web conferencing and virtual team communication systems |  | 2d | 2018-02-09 13:00 | 2018-02-12 15:00 | 71 | 216.73d | 0d |  | Apurva Sharma | 10h | 380 |
| 73 | 2.1.2.9 | Deliverable: Develop and share the final Project communication infrastructure plan that also includes project websites,groupware based collaboration,document management systems, enterprise project management softwares to be used,shared storage protocols |  | 2.4d | 2018-02-12 15:00 | 2018-02-14 10:00 | 72 | 216.73d |  |  | Apurva Sharma | 12h | 456 |
| 74 | 2.1.2.10 | Weekly updates and reports generated from Job boss sent to VP |  | 1d | 2018-07-13 10:40 | 2018-07-13 16:40 | 184 | 46d |  |  | Apurva Sharma | 5h | 190 |
| 75 | 2.1.2.11 | Deliverable: Final Training Plan produced with training content ,schedule,resources and others |  | 5d | 2018-04-02 15:51 | 2018-04-05 16:51 | 19 | 32.04d | 0d |  | Apurva Sharma; Mary Gibson | 50h | 2,150 |
| 76 | 2.1.2.12 | Approval of the detailed training plan by the management |  | 2.4d | 2018-04-05 16:51 | 2018-04-09 11:51 | 75 | 32.04d | 0d |  | Doug Coster; Greg Harrison | 24h |  |
| 77 | 2.1.2.13 | Training plan approved | milestone | 1d | 2018-04-09 11:51 | 2018-04-10 08:51 | 76 | 32.04d | 0d |  | Doug Coster; Greg Harrison | 10h |  |
| 78 | 2.1.3 | **Risk Management** |  | 114.1d | 2018-02-08 16:21 | 2018-05-21 09:51 |  | 107.96d |  |  |  | 510h | 23,205 |
| 79 | 2.1.3.1 | Generate scope issues log |  | 1d | 2018-02-08 16:21 | 2018-02-09 13:21 | 11 | 221.06d |  |  | Apurva Sharma | 5h | 190 |
| 80 | 2.1.3.2 | Meeting to Conduct Risk identification, Analysis including probability, severity of impact and likelihood of discovery in advance |  | 1d | 2018-02-08 16:21 | 2018-02-09 13:21 | 11 | 176.06d | 0d |  | Apurva Sharma; Chris Dobbrow; Christina Kutty; June Peterson; Krishnanand Naik; Lamont Wilson; Mary Gibson; Kurt DeMaagd; Ryan Smith | 45h | 1,285 |
| 81 | 2.1.3.3 | Deliverable: Prepare project risk register and review it weekly with stakeholders |  | 4d | 2018-02-09 13:21 | 2018-02-14 08:21 | 80 | 176.06d | 0d |  | Apurva Sharma | 20h | 760 |
| 82 | 2.1.3.4 | Deliverable: Monitor and generate Risk Analysis Report |  | 3d | 2018-02-14 08:21 | 2018-02-15 16:21 | 81 | 176.06d | 0d |  | Apurva Sharma | 15h | 570 |
| 83 | 2.1.3.5 | Job Boss Integration Training Material Development including the risks involved in SM touching Nolte's machines |  | 30d | 2018-02-15 16:21 | 2018-03-14 14:21 | 82 | 176.06d | 0d |  | Mary Gibson | 150h | 7,200 |
| 84 | 2.1.3.6 | Manufacturing System Training material Development |  | 55d | 2018-04-02 15:51 | 2018-05-21 09:51 | 19 | 107.96d |  |  | Mary Gibson | 275h | 13,200 |
| 85 | 2.2 | Communicate with stakeholders involved and establish all quality standards and metrics to be achieved during testing phase |  | 0.18d | 2018-02-15 16:21 | 2018-02-16 08:16 | 82 | 200.63d | 0d |  | Apurva Sharma; Christina Kutty; Krishnanand Naik; Lamont Wilson; Mat Jackson; Norma Wilson; Ray Bellman | 5h | 112.31 |
| 86 | 2.3 | Deliverable: Risk Management Plan including risk assessment methods,roles and responsibilities,risk ownership levels,risk register,risk categories and risk response plan including the Quality Assurance standards /quality control method |  | 2d | 2018-02-16 08:16 | 2018-02-19 10:16 | 85 | 200.63d | 0d |  | Apurva Sharma | 10h | 380 |
| 87 | 2.4 | Deliverable:Final Project Plan generated and shared with Nolte and SM |  | 5d | 2018-02-19 10:16 | 2018-02-22 11:16 | 86 | 200.63d | 0d |  | Apurva Sharma | 25h | 950 |
| 88 | 2.5 | Gain feedback from key Stakeholders involved through meetings and exchange opinions |  | 2d | 2018-02-22 11:16 | 2018-02-23 14:16 | 87 | 200.63d | 0d |  | Chris Dobbrow; Christina Kutty; Krishnanand Naik; Lamont Wilson; Mary Gibson; Mat Jackson; Norma Wilson; Ray Bellman; Apurva Sharma; June Peterson | 21.33h | 893.08 |
| 89 | 2.6 | Project Plan Review meeting ;further refine project plan if required and gain approvals |  | 2d | 2018-02-23 14:16 | 2018-02-26 16:16 | 88 | 200.63d | 0d |  | Apurva Sharma; Chris Dobbrow; Doug Coster; Greg Harrison; Mat Jackson; Norma Wilson; Ray Bellman | 70h | 655 |
| 90 | 2.7 | Approval of project plan by the management from Nolte |  | 1d | 2018-02-26 16:16 | 2018-02-27 13:16 | 89 | 200.63d | 0d |  | Doug Coster; Greg Harrison | 10h |  |
| 91 | 2.8 | Project plan approved | milestone | 1d | 2018-04-10 08:51 | 2018-04-10 14:51 | 77 | 32.04d | 0d |  | Doug Coster; Greg Harrison | 10h |  |
| 92 | 2.9 | Executive overview Informational Presentation meeting held for the board of directors on the outcomes of the project |  | 1d | 2018-04-10 14:51 | 2018-04-11 10:51 | 91, 127 | 32.04d | 0d |  | Apurva Sharma | 5h | 190 |

| ID | WBS | Task | Type | Duration | Start | Finish | Predecessors | Total slack | Free slack | Constraint | Resources | Work | Cost |
| --- | --- | --- | --- | --- | --- | --- | --- | --- | --- | --- | --- | --- | --- |
| 93 | 3 | **Execution** |  | 221.8d | 2018-02-01 10:00 | 2018-08-15 16:00 |  | 9.33d |  |  |  | 4365.5h | 215,129.91 |
| 94 | 3.1 | **Build Deliverables** |  | 160.97d | 2018-02-01 10:00 | 2018-06-22 15:51 |  | 35.61d |  |  |  | 2503h | 65,214.38 |
| 95 | 3.1.1 | **Development Team Weekly Meeting** |  | 142.43d | 2018-02-09 10:00 | 2018-06-15 10:07 |  | 79.11d |  |  |  | 19h | 486.88 |
| 96 | 3.1.1.1 | Development Team Weekly Meeting 1 |  | 0.03d | 2018-02-09 10:00 | 2018-02-09 10:07 |  | 221.51d |  | start no earlier than 2018-02-09 10:00 | Curtis Kellman; June Peterson; Krishnanand Naik; Kurt DeMaagd; Lamont Wilson; Mary Gibson; Ryan Smith; Yi Wang | 1h | 25.62 |
| 97 | 3.1.1.2 | Development Team Weekly Meeting 2 |  | 0.03d | 2018-02-16 10:00 | 2018-02-16 10:07 |  | 213.51d |  | start no earlier than 2018-02-16 10:00 | Curtis Kellman; June Peterson; Krishnanand Naik; Kurt DeMaagd; Lamont Wilson; Mary Gibson; Ryan Smith; Yi Wang | 1h | 25.62 |
| 98 | 3.1.1.3 | Development Team Weekly Meeting 3 |  | 0.03d | 2018-02-23 10:00 | 2018-02-23 10:07 |  | 205.51d |  | start no earlier than 2018-02-23 10:00 | Curtis Kellman; June Peterson; Krishnanand Naik; Kurt DeMaagd; Lamont Wilson; Mary Gibson; Ryan Smith; Yi Wang | 1h | 25.62 |
| 99 | 3.1.1.4 | Development Team Weekly Meeting 4 |  | 0.03d | 2018-03-02 10:00 | 2018-03-02 10:07 |  | 197.51d |  | start no earlier than 2018-03-02 10:00 | Curtis Kellman; June Peterson; Krishnanand Naik; Kurt DeMaagd; Lamont Wilson; Mary Gibson; Ryan Smith; Yi Wang | 1h | 25.62 |
| 100 | 3.1.1.5 | Development Team Weekly Meeting 5 |  | 0.03d | 2018-03-09 10:00 | 2018-03-09 10:07 |  | 189.51d |  | start no earlier than 2018-03-09 10:00 | Curtis Kellman; June Peterson; Krishnanand Naik; Kurt DeMaagd; Lamont Wilson; Mary Gibson; Ryan Smith; Yi Wang | 1h | 25.62 |
| 101 | 3.1.1.6 | Development Team Weekly Meeting 6 |  | 0.03d | 2018-03-16 10:00 | 2018-03-16 10:07 |  | 181.51d |  | start no earlier than 2018-03-16 10:00 | Curtis Kellman; June Peterson; Krishnanand Naik; Kurt DeMaagd; Lamont Wilson; Mary Gibson; Ryan Smith; Yi Wang | 1h | 25.62 |
| 102 | 3.1.1.7 | Development Team Weekly Meeting 7 |  | 0.03d | 2018-03-23 10:00 | 2018-03-23 10:07 |  | 173.51d |  | start no earlier than 2018-03-23 10:00 | Curtis Kellman; June Peterson; Krishnanand Naik; Kurt DeMaagd; Lamont Wilson; Mary Gibson; Ryan Smith; Yi Wang | 1h | 25.62 |
| 103 | 3.1.1.8 | Development Team Weekly Meeting 8 |  | 0.03d | 2018-03-30 10:00 | 2018-03-30 10:07 |  | 165.51d |  | start no earlier than 2018-03-30 10:00 | Curtis Kellman; June Peterson; Krishnanand Naik; Kurt DeMaagd; Lamont Wilson; Mary Gibson; Ryan Smith; Yi Wang | 1h | 25.62 |
| 104 | 3.1.1.9 | Development Team Weekly Meeting 9 |  | 0.03d | 2018-04-06 10:00 | 2018-04-06 10:07 |  | 157.51d |  | start no earlier than 2018-04-06 10:00 | Curtis Kellman; June Peterson; Krishnanand Naik; Kurt DeMaagd; Lamont Wilson; Mary Gibson; Ryan Smith; Yi Wang | 1h | 25.62 |
| 105 | 3.1.1.10 | Development Team Weekly Meeting 10 |  | 0.03d | 2018-04-13 10:00 | 2018-04-13 10:07 |  | 149.51d |  | start no earlier than 2018-04-13 10:00 | Curtis Kellman; June Peterson; Krishnanand Naik; Kurt DeMaagd; Lamont Wilson; Mary Gibson; Ryan Smith; Yi Wang | 1h | 25.62 |
| 106 | 3.1.1.11 | Development Team Weekly Meeting 11 |  | 0.03d | 2018-04-20 10:00 | 2018-04-20 10:07 |  | 141.51d |  | start no earlier than 2018-04-20 10:00 | Curtis Kellman; June Peterson; Krishnanand Naik; Kurt DeMaagd; Lamont Wilson; Mary Gibson; Ryan Smith; Yi Wang | 1h | 25.62 |
| 107 | 3.1.1.12 | Development Team Weekly Meeting 12 |  | 0.03d | 2018-04-27 10:00 | 2018-04-27 10:07 |  | 133.51d |  | start no earlier than 2018-04-27 10:00 | Curtis Kellman; June Peterson; Krishnanand Naik; Kurt DeMaagd; Lamont Wilson; Mary Gibson; Ryan Smith; Yi Wang | 1h | 25.62 |
| 108 | 3.1.1.13 | Development Team Weekly Meeting 13 |  | 0.03d | 2018-05-04 10:00 | 2018-05-04 10:07 |  | 125.51d |  | start no earlier than 2018-05-04 10:00 | Curtis Kellman; June Peterson; Krishnanand Naik; Kurt DeMaagd; Lamont Wilson; Mary Gibson; Ryan Smith; Yi Wang | 1h | 25.62 |
| 109 | 3.1.1.14 | Development Team Weekly Meeting 14 |  | 0.03d | 2018-05-11 10:00 | 2018-05-11 10:07 |  | 117.51d |  | start no earlier than 2018-05-11 10:00 | Curtis Kellman; June Peterson; Krishnanand Naik; Kurt DeMaagd; Lamont Wilson; Mary Gibson; Ryan Smith; Yi Wang | 1h | 25.62 |
| 110 | 3.1.1.15 | Development Team Weekly Meeting 15 |  | 0.03d | 2018-05-18 10:00 | 2018-05-18 10:07 |  | 109.51d |  | start no earlier than 2018-05-18 10:00 | Curtis Kellman; June Peterson; Krishnanand Naik; Kurt DeMaagd; Lamont Wilson; Mary Gibson; Ryan Smith; Yi Wang | 1h | 25.62 |
| 111 | 3.1.1.16 | Development Team Weekly Meeting 16 |  | 0.03d | 2018-05-25 10:00 | 2018-05-25 10:07 |  | 101.51d |  | start no earlier than 2018-05-25 10:00 | Curtis Kellman; June Peterson; Krishnanand Naik; Kurt DeMaagd; Lamont Wilson; Mary Gibson; Ryan Smith; Yi Wang | 1h | 25.62 |
| 112 | 3.1.1.17 | Development Team Weekly Meeting 17 |  | 0.03d | 2018-06-01 10:00 | 2018-06-01 10:07 |  | 95.11d |  | start no earlier than 2018-06-01 10:00 | Curtis Kellman; June Peterson; Krishnanand Naik; Kurt DeMaagd; Lamont Wilson; Mary Gibson; Ryan Smith; Yi Wang | 1h | 25.62 |
| 113 | 3.1.1.18 | Development Team Weekly Meeting 18 |  | 0.03d | 2018-06-08 10:00 | 2018-06-08 10:07 |  | 87.11d |  | start no earlier than 2018-06-08 10:00 | Curtis Kellman; June Peterson; Krishnanand Naik; Kurt DeMaagd; Lamont Wilson; Mary Gibson; Ryan Smith; Yi Wang | 1h | 25.62 |
| 114 | 3.1.1.19 | Development Team Weekly Meeting 19 |  | 0.03d | 2018-06-15 10:00 | 2018-06-15 10:07 |  | 79.11d |  | start no earlier than 2018-06-15 10:00 | Curtis Kellman; June Peterson; Krishnanand Naik; Kurt DeMaagd; Lamont Wilson; Mary Gibson; Ryan Smith; Yi Wang | 1h | 25.62 |
| 115 | 3.1.2 | Sight Machines provides a list of resources required for implementation by Nolte and Job Boss |  | 1.25d | 2018-02-27 13:16 | 2018-02-28 10:31 | 87, 90 | 200.63d |  |  | Chris Dobbrow; Kurt DeMaagd; Curtis Kellman; Ryan Smith | 25h |  |
| 116 | 3.1.3 | Detailed design plans and usecases generated for Part A, Part B and Part C roll outs of 34 machines |  | 5d | 2018-02-01 10:00 | 2018-02-06 11:00 |  | 35.61d | 0d |  | Apurva Sharma; Chris Dobbrow; Mat Jackson; Norma Wilson; Ray Bellman | 125h | 1,637.5 |
| 117 | 3.1.4 | Data extract from Sight Machines to cloud based database for JobBoss Integration |  | 60d | 2018-02-06 11:00 | 2018-03-29 16:00 | 116 | 148.63d | 0d |  | Krishnanand Naik | 300h | 11,100 |
| 118 | 3.1.5 | Programming performed to develop a custom developed database that will link existing Job boss to cloud-Digital twin model of manufacturing line in scope created |  | 1d | 2018-02-06 11:00 | 2018-02-06 17:00 | 116 | 225.13d |  |  | Krishnanand Naik; Lamont Wilson; Yi Wang | 15h | 545 |
| 119 | 3.1.6 | Data extract from Job Boss to cloud based databse for SM Integration |  | 17.5d | 2018-03-29 16:00 | 2018-04-13 15:30 | 117 | 148.63d |  |  | Krishnanand Naik; Lamont Wilson | 175h | 6,737.5 |
| 120 | 3.1.7 | Develop code to extract Employee Efficiency Analysis |  | 65d | 2018-02-06 11:00 | 2018-04-03 17:00 | 116 | 35.61d | 0d |  | Lamont Wilson | 325h | 13,000 |
| 121 | 3.1.8 | Develop code to extract Profit Analysis by Product |  | 44d | 2018-02-06 11:00 | 2018-03-15 16:00 | 116 | 56.61d | 0d |  | Krishnanand Naik | 220h | 8,140 |
| 122 | 3.1.9 | Develop code to extract Product Cost Analysis |  | 22d | 2018-02-06 11:00 | 2018-02-26 09:00 | 116 | 75.61d | 0d |  | Yi Wang | 110h | 3,520 |
| 123 | 3.1.10 | Procurement and IOT conversion of first round of 11 machines- Group A of 34 machines |  | 33d | 2018-02-06 11:00 | 2018-03-06 17:00 | 116 | 115.73d | 45.57d |  | Curtis Kellman; Ray Bellman | 330h | 4,537.5 |
| 124 | 3.1.11 | Deploy Code Programmed for Group A rollout of IOT machines |  | 2d | 2018-02-26 09:00 | 2018-02-27 11:00 | 122 | 75.61d | 0d |  | Yi Wang | 10h | 320 |
| 125 | 3.1.12 | Perform Unit Testing on employee efficiency analysis report |  | 5d | 2018-04-04 08:00 | 2018-04-09 09:00 | 120 | 35.61d | 3.57d |  | Lamont Wilson | 25h | 1,000 |
| 126 | 3.1.13 | Perform Unit Testing on Profit analysis report |  | 5d | 2018-03-15 16:00 | 2018-03-20 17:00 | 121 | 56.61d | 24.57d |  | Krishnanand Naik | 25h | 925 |
| 127 | 3.1.14 | Perform Unit Testing on Product cost analysis report |  | 5d | 2018-02-27 11:00 | 2018-03-02 12:00 | 124 | 75.61d | 43.57d |  | Yi Wang | 25h | 800 |
| 128 | 3.1.15 | Patches and fixes deployed incase of any issues in unit testing |  | 5d | 2018-04-11 10:51 | 2018-04-16 11:51 | 125, 126, 92 | 32.04d | 0d |  | Yi Wang | 25h | 800 |
| 129 | 3.1.16 | Procurement and IOT Conversion of second round of 11 machines- Group B of 34 machines |  | 33d | 2018-04-16 11:51 | 2018-05-15 08:51 | 123, 124, 128 | 70.16d | 0d |  | Ray Bellman; Curtis Kellman | 330h | 4,537.5 |
| 130 | 3.1.17 | Code deployed on Group B rollout of IOT machines | milestone | 2d | 2018-05-15 08:51 | 2018-05-16 10:51 | 129 | 70.16d | 0d |  | Yi Wang | 10h | 320 |
| 131 | 3.1.18 | Procurement and IOT Conversion of last round of 12 machines- Group C of 34 machines |  | 35.4d | 2018-05-16 10:51 | 2018-06-18 11:51 | 128, 129, 130 | 70.16d | 0d |  | Ray Bellman; Curtis Kellman | 354h | 4,867.5 |
| 132 | 3.1.19 | Code deployed on final Group rollout of IOT machines after thorough testing of first and second round issues | milestone | 2d | 2018-06-18 11:51 | 2018-06-19 14:51 | 131 | 70.16d | 0d |  | Yi Wang | 10h | 320 |
| 133 | 3.1.20 | Project documentation updated, and new ones added in cloud-based repository as suggested |  | 5d | 2018-06-19 14:51 | 2018-06-22 15:51 | 132 | 70.16d |  |  | Apurva Sharma | 25h | 950 |
| 134 | 3.1.21 | Deliverable: A prototype extract from the integrated system developed with 3 financial reports shared with Greg for approval |  | 1d | 2018-06-19 14:51 | 2018-06-20 10:51 | 132 | 74.16d |  |  | Greg Harrison; Apurva Sharma | 10h | 190 |
| 135 | 3.1.22 | Job Boss System Integration Training classes |  | 1d | 2018-03-21 08:21 | 2018-03-21 14:21 | 83FS+7d | 176.06d |  |  | Mary Gibson | 5h | 240 |
| 136 | 3.1.23 | Job boss Integration Training Classes |  | 1d | 2018-06-19 14:51 | 2018-06-20 10:51 | 132 | 74.16d |  |  | Mary Gibson | 5h | 240 |

| ID | WBS | Task | Type | Duration | Start | Finish | Predecessors | Total slack | Free slack | Constraint | Resources | Work | Cost |
| --- | --- | --- | --- | --- | --- | --- | --- | --- | --- | --- | --- | --- | --- |
| 137 | 3.2 | **Prototype Testing** |  | 155.27d | 2018-02-06 15:30 | 2018-06-22 15:51 |  | 70.16d |  |  |  | 912.5h | 51,884.7 |
| 138 | 3.2.1 | Creation and Design of exhaustive set of manual and automated test plans |  | 30d | 2018-02-06 15:30 | 2018-03-05 13:30 | 5 | 193.03d | 0d |  | Christina Kutty; Paul Johnson | 300h | 12,750 |
| 139 | 3.2.2 | Test environment setup for extensive testing of the prototype built |  | 2.4d | 2018-03-05 13:30 | 2018-03-07 08:30 | 138 | 193.03d |  |  | Chris Dobbrow; Christina Kutty; Krishnanand Naik; Paul Johnson | 48h | 1,464 |
| 140 | 3.2.3 | **Daily QA Team Scrum meeting** |  | 16.02d | 2018-04-20 10:00 | 2018-05-04 10:06 |  | 125.51d |  |  |  | 5.5h | 187 |
| 141 | 3.2.3.1 | Daily QA Team Scrum meeting 1 |  | 0.02d | 2018-04-20 10:00 | 2018-04-20 10:06 |  | 141.51d |  | start no earlier than 2018-04-20 10:00 | Christina Kutty; Paul Johnson; Curtis Kellman; Krishnanand Naik; Mary Gibson | 0.5h | 17 |
| 142 | 3.2.3.2 | Daily QA Team Scrum meeting 2 |  | 0.02d | 2018-04-23 10:00 | 2018-04-23 10:06 |  | 139.91d |  | start no earlier than 2018-04-23 10:00 | Christina Kutty; Paul Johnson; Curtis Kellman; Krishnanand Naik; Mary Gibson | 0.5h | 17 |
| 143 | 3.2.3.3 | Daily QA Team Scrum meeting 3 |  | 0.02d | 2018-04-24 10:00 | 2018-04-24 10:06 |  | 138.31d |  | start no earlier than 2018-04-24 10:00 | Christina Kutty; Paul Johnson; Curtis Kellman; Krishnanand Naik; Mary Gibson | 0.5h | 17 |
| 144 | 3.2.3.4 | Daily QA Team Scrum meeting 4 |  | 0.02d | 2018-04-25 10:00 | 2018-04-25 10:06 |  | 136.71d |  | start no earlier than 2018-04-25 10:00 | Christina Kutty; Paul Johnson; Curtis Kellman; Krishnanand Naik; Mary Gibson | 0.5h | 17 |
| 145 | 3.2.3.5 | Daily QA Team Scrum meeting 5 |  | 0.02d | 2018-04-26 10:00 | 2018-04-26 10:06 |  | 135.11d |  | start no earlier than 2018-04-26 10:00 | Christina Kutty; Paul Johnson; Curtis Kellman; Krishnanand Naik; Mary Gibson | 0.5h | 17 |
| 146 | 3.2.3.6 | Daily QA Team Scrum meeting 6 |  | 0.02d | 2018-04-27 10:00 | 2018-04-27 10:06 |  | 133.51d |  | start no earlier than 2018-04-27 10:00 | Christina Kutty; Paul Johnson; Curtis Kellman; Krishnanand Naik; Mary Gibson | 0.5h | 17 |
| 147 | 3.2.3.7 | Daily QA Team Scrum meeting 7 |  | 0.02d | 2018-04-30 10:00 | 2018-04-30 10:06 |  | 131.91d |  | start no earlier than 2018-04-30 10:00 | Christina Kutty; Paul Johnson; Curtis Kellman; Krishnanand Naik; Mary Gibson | 0.5h | 17 |
| 148 | 3.2.3.8 | Daily QA Team Scrum meeting 8 |  | 0.02d | 2018-05-01 10:00 | 2018-05-01 10:06 |  | 130.31d |  | start no earlier than 2018-05-01 10:00 | Christina Kutty; Paul Johnson; Curtis Kellman; Krishnanand Naik; Mary Gibson | 0.5h | 17 |
| 149 | 3.2.3.9 | Daily QA Team Scrum meeting 9 |  | 0.02d | 2018-05-02 10:00 | 2018-05-02 10:06 |  | 128.71d |  | start no earlier than 2018-05-02 10:00 | Christina Kutty; Paul Johnson; Curtis Kellman; Krishnanand Naik; Mary Gibson | 0.5h | 17 |
| 150 | 3.2.3.10 | Daily QA Team Scrum meeting 10 |  | 0.02d | 2018-05-03 10:00 | 2018-05-03 10:06 |  | 127.11d |  | start no earlier than 2018-05-03 10:00 | Christina Kutty; Paul Johnson; Curtis Kellman; Krishnanand Naik; Mary Gibson | 0.5h | 17 |
| 151 | 3.2.3.11 | Daily QA Team Scrum meeting 11 |  | 0.02d | 2018-05-04 10:00 | 2018-05-04 10:06 |  | 125.51d |  | start no earlier than 2018-05-04 10:00 | Christina Kutty; Paul Johnson; Curtis Kellman; Krishnanand Naik; Mary Gibson | 0.5h | 17 |
| 152 | 3.2.4 | Machine Sensors Quality assurance testing of first round of 11 machines; ensuring that they are efficiently working with Sight Machine's big data analytics |  | 10d | 2018-04-16 11:51 | 2018-04-24 14:51 | 128 | 32.04d | 0d |  | Christina Kutty; Paul Johnson | 100h | 4,250 |
| 153 | 3.2.5 | Testing Analysis: Comparison of QA results with the baseline quality standards set in project plan |  | 3d | 2018-04-24 14:51 | 2018-04-26 13:51 | 152 | 32.04d | 0d |  | Apurva Sharma; Christina Kutty; June Peterson; Krishnanand Naik; Paul Johnson | 75h | 3,120 |
| 154 | 3.2.6 | Perform regression tests to ensure patches fix do not produce andy cross functional impact on Nolte's other components |  | 4d | 2018-04-26 13:51 | 2018-05-01 08:51 | 153 | 78.76d | 0d |  | Paul Johnson | 20h | 780 |
| 155 | 3.2.7 | End-to-end Bug chasing/ Tracking and verification of any cross functional impact on any other Nolte's components |  | 7d | 2018-05-01 08:51 | 2018-05-07 11:51 | 154 | 78.76d | 0d |  | Christina Kutty; Paul Johnson | 70h | 2,975 |
| 156 | 3.2.8 | Actions plans generated if defects are found and sufficient time buffer provided for fix;all bugs tracked to closure |  | 3d | 2018-04-27 15:51 | 2018-05-01 14:51 | 153FS+2d | 32.04d | 0d |  | Apurva Sharma; Christina Kutty | 30h | 1,260 |
| 157 | 3.2.9 | Machine Sensors Quality assurance testing of second round of 11 machines; ensuring that they are efficiently working with Sight Machine's big data analytics |  | 5d | 2018-05-16 10:51 | 2018-05-21 11:51 | 130 | 107.56d |  |  | Christina Kutty; Paul Johnson | 50h | 2,125 |
| 158 | 3.2.10 | Final round of (Machine Sensors) Quality assurance testing of 12 machines |  | 5d | 2018-06-19 14:51 | 2018-06-22 15:51 | 132 | 70.16d |  |  | Christina Kutty; Paul Johnson | 50h | 2,125 |
| 159 | 3.2.11 | Meeting with stakeholders to manage and assign re work incase of issues found |  | 0.8d | 2018-05-10 13:51 | 2018-05-11 08:51 | 155FS+5d | 78.76d |  |  | Apurva Sharma; Chris Dobbrow; Christina Kutty; June Peterson; Krishnanand Naik; Lamont Wilson | 24h | 836 |
| 160 | 3.2.12 | Manufacturing System Training classes conducted |  | 1d | 2018-04-25 08:51 | 2018-04-25 14:51 | 75FS+21d | 134.96d | 8.59d |  | Mary Gibson | 5h | 240 |
| 161 | 3.2.13 | Deliverable: Test Reports : Maintain an Issue log and defect traceability matrix |  | 1.2d | 2018-05-01 14:51 | 2018-05-02 11:51 | 156 | 32.04d | 0d |  | Paul Johnson | 6h | 234 |
| 162 | 3.2.14 | Deliverable: Prepare testing report on results and potential impact/risks if prototype is fully rolled out |  | 0.3d | 2018-05-02 11:51 | 2018-05-02 14:21 | 161 | 32.04d | 0d |  | Christina Kutty; Paul Johnson | 3h | 127.5 |
| 163 | 3.2.15 | Stakeholder review and Project go/no-go decision by Nolte |  | 0.69d | 2018-05-02 14:21 | 2018-05-03 08:47 | 162 | 32.04d | 0d |  | Apurva Sharma; Chris Dobbrow; Doug Coster; Greg Harrison; Mat Jackson; Norma Wilson; Ray Bellman | 24h | 224.57 |
| 164 | 3.2.16 | Payment for Training held for CNC machine operators are scheduled for Sight Machine training |  | 1d | 2018-05-03 08:47 | 2018-05-03 14:47 | 163, 75, 160 | 126.38d |  |  | Sight Machines System Training Payment; Apurva Sharma | 5h | 17,490 |
| 165 | 3.2.17 | Deliverable: Generate a project implementation document and send for approval |  | 5d | 2018-05-03 08:47 | 2018-05-08 09:47 | 163 | 120.15d | 0d |  | Apurva Sharma | 25h | 950 |
| 166 | 3.2.18 | Project implementation document approved | milestone | 1.17d | 2018-05-08 09:47 | 2018-05-08 16:37 | 165 | 120.15d | 0d |  | Chris Dobbrow; Doug Coster; Greg Harrison; Mat Jackson; Norma Wilson; Ray Bellman | 35h | 160.42 |
| 167 | 3.2.19 | Review the document with all stakeholders |  | 0.06d | 2018-05-08 16:37 | 2018-05-08 16:54 | 166 | 120.15d | 0d |  | Apurva Sharma; Chris Dobbrow; Doug Coster; Greg Harrison; Mat Jackson; Norma Wilson; Ray Bellman | 2h | 18.71 |
| 168 | 3.2.20 | Budget meeting with key stakeholders |  | 1d | 2018-05-08 16:54 | 2018-05-09 13:54 | 167 | 120.15d |  |  | Chris Dobbrow; Apurva Sharma; Doug Coster; Greg Harrison; Mary Gibson; Mat Jackson; Ray Bellman | 35h | 567.5 |

| ID | WBS | Task | Type | Duration | Start | Finish | Predecessors | Total slack | Free slack | Constraint | Deadline | Resources | Work | Cost |
| --- | --- | --- | --- | --- | --- | --- | --- | --- | --- | --- | --- | --- | --- | --- |
| 169 | 3.3 | **Production Implementation** |  | 86d | 2018-06-01 09:00 | 2018-08-15 16:00 |  | 0d |  |  |  |  | 950h | 98,030.83 |
| 170 | 3.3.1 | Initial Payment due to Sight Machines for Contract | milestone | 1d | 2018-06-01 09:00 | 2018-06-01 15:00 | 163 | 0d |  | must finish on 2018-06-01 15:00 | 2018-06-01 15:00 | Apurva Sharma; Initial Payment :Contract Fees | 5h | 10,190 |
| 171 | 3.3.2 | Carry out fully functional deployment of the prototype code into the actual production environment from the simulated environment |  | 4d | 2018-06-01 15:00 | 2018-06-06 10:00 | 170 | 0d |  |  |  | June Peterson; Krishnanand Naik; Lamont Wilson; Mary Gibson; Yi Wang; Curtis Kellman | 120h | 4,100 |
| 172 | 3.3.3 | User Acceptance testing on Group A rollout of 11 machines |  | 5d | 2018-06-06 10:00 | 2018-06-11 11:00 | 171 | 0d |  |  |  | Paul Johnson | 25h | 975 |
| 173 | 3.3.4 | Payment to Sight Machines for successful installation of sensors on first round of 11 Machines(1/3rd) |  | 1d | 2018-06-11 11:00 | 2018-06-11 17:00 | 172 | 84.33d |  |  |  | Apurva Sharma; CNC Machines Installation of Sensors Part A (1/3rd) | 5h | 11,190 |
| 174 | 3.3.5 | User Acceptance testing on Group B rollout of 11 machines |  | 5d | 2018-06-11 11:00 | 2018-06-14 12:00 | 172 | 0d |  |  |  | Paul Johnson | 25h | 975 |
| 175 | 3.3.6 | Payment to Sight Machines for successful installation of sensors on the second round of 11 Machines(2/3rd) |  | 1d | 2018-06-14 13:00 | 2018-06-15 09:00 | 174 | 79.33d |  |  |  | Apurva Sharma; CNC Machines Installation of Sensors Part B (2/3rd) | 5h | 11,190 |
| 176 | 3.3.7 | User Acceptance testing on Final rollout of 12 machines |  | 5d | 2018-06-14 13:00 | 2018-06-19 14:00 | 174 | 0d |  |  |  | Paul Johnson | 25h | 975 |
| 177 | 3.3.8 | Final Payment to Sight Machines for successful installation of sensors on rest of the 12 Machines |  | 1d | 2018-06-19 14:00 | 2018-06-20 10:00 | 176 | 74.33d |  |  |  | Apurva Sharma; CNC Machines Installation of Sensors Part C (Final) | 5h | 12,190 |
| 178 | 3.3.9 | Code Integration of Nolte's all individual 34 machines |  | 5d | 2018-06-19 14:00 | 2018-06-22 15:00 | 172, 174, 176 | 0d |  |  |  | Yi Wang; Lamont Wilson; Krishnanand Naik | 75h | 2,725 |
| 179 | 3.3.10 | Verify Big data collection quality from all 34 IoT devices setup on the platform |  | 3d | 2018-06-22 15:00 | 2018-06-26 14:00 | 178 | 0d |  |  |  | Christina Kutty; Paul Johnson; Curtis Kellman; Kurt DeMaagd; Mary Gibson; Ray Bellman; Ryan Smith | 105h | 2,407.5 |
| 180 | 3.3.11 | Deliverable: Cloud based storage provided by Sight Machine for Nolte's big data generated from its full IOT implementation |  | 2d | 2018-06-26 14:00 | 2018-06-27 16:00 | 179 | 0d |  |  |  | Chris Dobbrow | 10h |  |
| 181 | 3.3.12 | Live, fully functional and integrated Enterprise Manufacturing Analytics(EMA) product connected with Nolte’s line of computer-based machining equipment consisting of 34 machines | milestone | 5d | 2018-06-27 16:00 | 2018-07-02 17:00 | 180 | 0d |  |  |  | Christina Kutty; June Peterson; Krishnanand Naik; Lamont Wilson; Paul Johnson; Yi Wang | 150h | 6,050 |
| 182 | 3.3.13 | Integration testing on the entire set of machines and its cross impact on Nolte's any other components |  | 6.67d | 2018-07-03 08:00 | 2018-07-09 09:20 | 181, 179 | 0d |  |  |  | Christina Kutty; Paul Johnson; Krishnanand Naik | 100h | 4,066.67 |
| 183 | 3.3.14 | Production release Testing - Simulation of Manufacturing Production with Sight Machine Analytics |  | 10d | 2018-07-09 09:20 | 2018-07-17 11:20 | 182 | 42.67d | 0d |  |  | Christina Kutty; Paul Johnson | 100h | 4,250 |
| 184 | 3.3.15 | Production Release Testing for Job Boss Integration for the 3 types of reports generation |  | 6.67d | 2018-07-09 09:20 | 2018-07-13 10:40 | 182 | 0d |  |  |  | Christina Kutty; Paul Johnson; Krishnanand Naik | 100h | 4,066.67 |
| 185 | 3.3.16 | Nolte procures and installs other resources recommended by SM ( cloud subscriptions) |  | 2d | 2018-06-27 16:00 | 2018-06-29 09:00 | 180, 179 | 63.33d |  |  |  | June Peterson; Krishnanand Naik; Lamont Wilson; Mary Gibson; Mat Jackson; Norma Wilson; Ray Bellman | 70h | 2,005 |
| 186 | 3.3.17 | **Sight Machine Software contract Payment** |  | 69.8d | 2018-06-15 10:00 | 2018-08-15 16:00 |  | 9.33d |  |  |  |  | 15h | 11,070 |
| 187 | 3.3.17.1 | Sight Machine Software contract Payment 1 |  | 1d | 2018-06-15 10:00 | 2018-06-15 16:00 |  | 78.13d |  | start no earlier than 2018-06-15 10:00 |  | Apurva Sharma; Sight Machines Software Contract Payment | 5h | 3,690 |
| 188 | 3.3.17.2 | Sight Machine Software contract Payment 2 |  | 1d | 2018-07-16 08:00 | 2018-07-16 14:00 |  | 44.93d |  | start no earlier than 2018-07-15 10:00 |  | Apurva Sharma; Sight Machines Software Contract Payment | 5h | 3,690 |
| 189 | 3.3.17.3 | Sight Machine Software contract Payment 3 |  | 1d | 2018-08-15 10:00 | 2018-08-15 16:00 |  | 9.33d |  | start no earlier than 2018-08-15 10:00 |  | Apurva Sharma; Sight Machines Software Contract Payment | 5h | 3,690 |
| 190 | 3.3.18 | **Sight Machine Cloud Services Contract** |  | 1d | 2018-08-01 10:00 | 2018-08-01 16:00 |  | 25.33d |  |  |  |  | 5h | 1,915 |
| 191 | 3.3.18.1 | Sight Machine Cloud Services Contract 1 |  | 1d | 2018-08-01 10:00 | 2018-08-01 16:00 |  | 25.33d |  | start no earlier than 2018-08-01 10:00 |  | Apurva Sharma; Sight Machines Cloud Services Contract Payment | 5h | 1,915 |
| 192 | 3.3.19 | Successful User Acceptance Sign Off Payment |  | 1d | 2018-07-17 11:20 | 2018-07-18 08:20 | 181, 182, 183, 184 | 42.67d |  |  |  | Successful User Acceptance Sign off Payment; Apurva Sharma | 5h | 7,690 |

| ID | WBS | Task | Type | Duration | Start | Finish | Predecessors | Total slack | Free slack | Resources | Work | Cost |
| --- | --- | --- | --- | --- | --- | --- | --- | --- | --- | --- | --- | --- |
| 193 | 4 | **Monitoring and Control** |  | 134.96d | 2018-04-05 16:51 | 2018-08-03 10:40 |  | 23d |  |  | 495h | 16,385 |
| 194 | 4.1 | Problem Management meeting conducted in case of any issues(adhoc) |  | 5d | 2018-07-13 10:40 | 2018-07-18 11:40 | 184 | 42d |  | Lamont Wilson; Mary Gibson; Krishnanand Naik; Christina Kutty; Apurva Sharma; Ray Bellman; Curtis Kellman | 175h | 5,912.5 |
| 195 | 4.2 | Compare project status and its activities progress to the actual plan, as resources perform the scheduled work |  | 4d | 2018-07-13 10:40 | 2018-07-17 15:40 | 184 | 0d |  | Apurva Sharma | 20h | 760 |
| 196 | 4.3 | Measure project variables (time, scope, cost , quality) |  | 4d | 2018-07-17 15:40 | 2018-07-20 10:40 | 195 | 0d |  | Apurva Sharma | 20h | 760 |
| 197 | 4.4 | Identify corrective actions and lessons learnt report incase needed to ensure compliance to the project plan. |  | 2d | 2018-07-20 10:40 | 2018-07-23 13:40 | 196 | 32d | 0d | Apurva Sharma | 10h | 380 |
| 198 | 4.5 | Make Project analysis documents updates |  | 5d | 2018-07-23 13:40 | 2018-07-26 14:40 | 197 | 32d |  | Apurva Sharma | 25h | 950 |
| 199 | 4.6 | Update Project issues register contents |  | 1d | 2018-07-20 10:40 | 2018-07-20 16:40 | 196, 159 | 0d |  | Apurva Sharma | 5h | 190 |
| 200 | 4.7 | Final Issue Resolution for all Sight Machines Analytics and Job Boss Data Integration |  | 5d | 2018-07-20 16:40 | 2018-07-26 08:40 | 199, 159 | 0d |  | Lamont Wilson; Mary Gibson; Krishnanand Naik; Christina Kutty; Apurva Sharma; Ray Bellman; Curtis Kellman | 175h | 5,912.5 |
| 201 | 4.8 | Deliverable: Prepare Change control document and change requests log |  | 3d | 2018-04-05 16:51 | 2018-04-09 15:51 | 75 | 154.96d |  | Apurva Sharma | 15h | 570 |
| 202 | 4.9 | Deliverable: Project Performance reports |  | 5d | 2018-07-26 08:40 | 2018-07-31 09:40 | 195, 196, 200 | 0d |  | Apurva Sharma | 25h | 950 |
| 203 | 4.10 | Ensure and establish support for continuous support for Nolte's end users |  | 5d | 2018-07-31 09:40 | 2018-08-03 10:40 | 202 | 23d |  | Chris Dobbrow | 25h |  |
| 204 | 5 | **Closure** |  | 28d | 2018-07-31 09:40 | 2018-08-23 14:40 |  | 0d |  |  | 195h | 5,457.5 |
| 205 | 5.1 | Performance summary of project implementation-1 |  | 2d | 2018-07-31 09:40 | 2018-08-01 11:40 | 202 | 0d |  | Apurva Sharma | 10h | 380 |
| 206 | 5.2 | Documentation of actual work performed, or other details reported for future reference.All communication recorded and saved for future reference |  | 2d | 2018-08-01 11:40 | 2018-08-02 14:40 | 205 | 0d |  | Apurva Sharma | 10h | 380 |
| 207 | 5.3 | Stakeholder Satifaction and review meeting |  | 1d | 2018-08-02 14:40 | 2018-08-03 10:40 | 206 | 0d |  | Apurva Sharma; Chris Dobbrow; Doug Coster; Greg Harrison; Mat Jackson; Norma Wilson | 30h | 190 |
| 208 | 5.4 | Final project closure and project success reports |  | 12d | 2018-08-03 10:40 | 2018-08-14 15:40 | 207 | 0d |  | Apurva Sharma | 60h | 2,280 |
| 209 | 5.5 | Final Contract Payment to SM |  | 2d | 2018-08-14 15:40 | 2018-08-16 08:40 | 208 | 0d |  | Apurva Sharma | 10h | 380 |
| 210 | 5.6 | Documentation of lessons learned during the project for the future. |  | 7d | 2018-08-16 08:40 | 2018-08-22 11:40 | 209 | 0d |  | Apurva Sharma | 35h | 1,330 |
| 211 | 5.7 | Final project closure meeting |  | 1d | 2018-08-22 11:40 | 2018-08-23 08:40 | 210 | 0d |  | Apurva Sharma; Chris Dobbrow; Doug Coster; Greg Harrison; Mat Jackson; Norma Wilson; Ray Bellman | 35h | 327.5 |
| 212 | 5.8 | Project closed | milestone | 1d | 2018-08-23 08:40 | 2018-08-23 14:40 | 211 | 0d |  | Apurva Sharma | 5h | 190 |
